Schedule from MS Project, 2007-11-23 to 2008-02-01.

## Calendars

- 标准: Mon-Fri 08:00-12:00, 13:00-17:00; Sat-Sun off.

## Resources

| Resource |
| --- |
| 王洪波 |
| 郎晓霞 |
| xuping |
| 徐萍 |
| 杨新 |
| 赖齐 |
| 王全斌 |
| 黄小玲 |
| 孙冰 |
| 汪婧 |
| 姜宇辉 |
| 张应能 |
| 李之兴 |
| 朱森勇 |
| 白昊 |
| XXX |
| 刘颖 |
| 于新麦 |
| 陆雪忠 |
| 赵毅 |

## Schedule

| ID | Task | Duration | Start | Finish | Total slack | Constraint | Resources | Work |
| --- | --- | --- | --- | --- | --- | --- | --- | --- |
| 1 | 《需求分析及产品规格》 | 5d | 2007-11-23 | 2007-11-29 | 2d | start no earlier than 2007-11-23 | 王洪波 | 40h |
| 2 | Demo及评审 | 5d | 2007-11-23 | 2007-11-29 | 2d | start no earlier than 2007-11-23 | 郎晓霞 | 40h |
| 3 | CMO建立VOB | 5d | 2007-11-23 | 2007-11-29 | 2d | start no earlier than 2007-11-23 | 徐萍 | 40h |
| 4 | 《架构设计》或《技术白皮书》（考虑兼容和升级）评审 | 5d | 2007-11-23 | 2007-11-29 | 2d | start no earlier than 2007-11-23 | 杨新; 郎晓霞 | 80h |
| 5 | Build划分规划 | 1d | 2007-11-27 | 2007-11-27 | 2d | start no earlier than 2007-11-27 | 杨新; 赖齐 | 16h |
| 6 | 测试用例编写 | 5d | 2007-11-27 | 2007-12-03 | 9d | start no earlier than 2007-11-27 | 王全斌 | 40h |
| 7 | 模块《规格》《设计》《接口》 | 5d | 2007-11-26 | 2007-11-30 | 1d | start no earlier than 2007-11-26 | 黄小玲; 孙冰; 汪婧; 姜宇辉; 张应能; 李之兴; 朱森勇 | 280h |
| 8 | 性能提高方案确定 | 1d | 2007-11-23 | 2007-11-23 | 4d | start no earlier than 2007-11-23 | 白昊; 赵毅 | 16h |
| 9 | 公用数据结构确定并编码 | 3d | 2007-11-27 | 2007-11-29 | 2d | start no earlier than 2007-11-27 | 汪婧 | 24h |
| 10 | Build1开发 | 10d | 2007-12-03 | 2007-12-14 | 10d | start no earlier than 2007-12-03 | 黄小玲; 孙冰; 汪婧; 姜宇辉; 张应能; 李之兴; 朱森勇; 白昊; 赵毅 | 720h |
| 11 | 选择测试用例\Build1测试1（包括性能预估测试） | 5d | 2007-12-17 | 2007-12-21 | 5d | start no earlier than 2007-12-17 | 王全斌; XXX | 80h |
| 12 | 选择测试用例\Build1测试2 | 5d | 2007-12-24 | 2007-12-28 | 5d | start no earlier than 2007-12-24 | 王全斌; XXX | 80h |
| 13 | Build2开发 | 10d | 2007-12-17 | 2007-12-28 | 5d | start no earlier than 2007-12-17 | 黄小玲; 孙冰; 汪婧; 姜宇辉; 张应能; 李之兴; 朱森勇; 白昊; 赵毅 | 720h |
| 14 | 选择自动单元测试 | 1d | 2007-12-28 | 2007-12-28 | 5d | start no earlier than 2007-12-28 | 王全斌 | 8h |
| 15 | 自动单元测试开发 | 5d | 2007-12-31 | 2008-01-04 | 5d | start no earlier than 2007-12-31 | 黄小玲; 孙冰; 汪婧; 姜宇辉; 张应能; 李之兴; 朱森勇; 白昊; 赵毅 | 360h |
| 16 | BOM申请 | 5d | 2007-12-31 | 2008-01-04 | 5d | start no earlier than 2007-12-31 | 刘颖 | 40h |
| 17 | 文档开发 | 10d | 2007-12-03 | 2007-12-14 | 15d | start no earlier than 2007-12-03 | 于新麦 | 80h |
| 18 | 《客户迁移方案》（升级和兼容） | 5d | 2008-01-07 | 2008-01-11 | 10d | start no earlier than 2008-01-07 | 杨新 | 40h |
| 19 | 选择测试用例\集成测试3 | 10d | 2007-12-31 | 2008-01-11 | 10d | start no earlier than 2007-12-31 | 王全斌; XXX | 160h |
| 20 | 选择测试用例\集成测试4 | 10d | 2008-01-14 | 2008-01-25 | 0.5d | start no earlier than 2008-01-14 | 王全斌; XXX | 160h |
| 21 | 培训准备 | 5d | 2007-12-03 | 2007-12-07 | 35.5d | start no earlier than 2007-12-03 | 赖齐; 郎晓霞 | 80h |
| 22 | 实施培训 | 5d | 2007-11-23 | 2007-11-29 | 41.5d | start no earlier than 2007-11-23 | 赖齐; 郎晓霞 | 80h |
| 23 | 生产移交 | 5d | 2008-01-28 | 2008-02-01 | 0d | start no earlier than 2008-01-28 | 刘颖; 王全斌 | 80h |
| 24 | 项目总结 | 3d | 2008-01-28 | 2008-01-30 | 2d | start no earlier than 2008-01-28 | 陆雪忠 | 24h |
